# 东科 Vth -1V

Schedule from a web Gantt chart, 2025-09-29 to 2026-12-20.
Every day is a working day

## Schedule

| ID | WBS | Task | Duration | Start | Finish | Predecessors | Complete | Status | inPeople |
| --- | --- | --- | --- | --- | --- | --- | --- | --- | --- |
| 2 | 1 | **1st Learning Cycle** | 123d | 2025-09-29 | 2026-01-29 |  | 1% |  |  |
| 4 | 1.1 | kick-off | 1d | 2025-09-29 | 2025-09-29 |  | 100% |  |  |
| 5 | 1.2 | 项目立项会议 | 1d | 2025-10-13 | 2025-10-13 |  |  |  |  |
| 6 | 1.3 | W/S | 30d | 2025-10-15 | 2025-11-13 |  |  |  |  |
| 7 | 1.4 | F/O | 2d | 2025-11-14 | 2025-11-15 | 6 |  | waiting |  |
| 8 | 1.5 | Samples | 35d | 2025-11-16 | 2025-12-20 | 7 |  | waiting | 张明东/谢书生 |
| 9 | 1.6 | RE 1000H | 40d | 2025-12-21 | 2026-01-29 | 8 |  | waiting | 刘子良/邓超凡 |
| 10 | 2 | **2nd Learning Cycle** | 121d | 2026-01-30 | 2026-05-30 |  |  |  |  |
| 11 | 2.1 | RE 1000H | 121d | 2026-01-30 | 2026-05-30 |  |  |  | 刘子良/邓超凡 |
| 12 | 3 | **3rd Learning Cycl** | 93d | 2026-05-31 | 2026-08-31 |  |  |  |  |
| 13 | 3.1 | RE 1000H | 93d | 2026-05-31 | 2026-08-31 |  |  |  | 刘子良/邓超凡 |
| 14 | 4 | **Formal Qual.** | 111d | 2026-09-01 | 2026-12-20 |  |  |  |  |
| 15 | 4.1 | SPW W/S | 41d | 2026-09-01 | 2026-10-11 |  |  |  |  |
| 16 | 4.2 | F/O & Assemby out | 30d | 2026-10-12 | 2026-11-10 | 15 |  | waiting |  |
| 17 | 4.3 | RE 168H | 15d | 2026-11-11 | 2026-11-25 | 16 |  | waiting | 刘子良/邓超凡 |
| 18 | 4.4 | RE 1000H | 40d | 2026-11-11 | 2026-12-20 | 16 |  | waiting | 刘子良/邓超凡 |
